# Excercise31_Module3

Schedule from MS Project, 2025-02-21 to 2027-01-22, status date 2025-08-21, costs in $, A marks actual dates.

## Calendars

- Standard: Mon-Fri 08:00-12:00, 13:00-17:00; Sat-Sun off. Exceptions (off unless hours are given): 2025-03-01 08:00-12:00, 13:00-17:00.

## Resources

| Resource | Group | Unit | Rate |
| --- | --- | --- | --- |
| Architect | Consultant |  | 9 |
| Draftsperson | Staff |  | 7 |
| Building Clerk | Staff |  | 8 |
| Supervisor | Staff |  | 12 |
| Rigger | Wages |  | 5 |
| Boilermaker | Wages |  | 5 |
| Welder | Wages |  | 6 |
| Carpenter | Wages |  | 7 |
| Painter | Wages |  | 6 |
| Labourer | Wages |  | 6 |
| Driver | Wages |  | 8 |
| No Barrier Fencing | Contractor |  | 3 |
| Rock Solid Concrete | Contractor |  | 4 |
| Listen Ear Audio | Contractor |  | 5 |
| In Focus Video | Contractor |  | 5 |
| Pure Grass Turf | Contractor |  | 5 |
| Building Inspector | Government |  | 5 |
| High Jib Crane | Equipment |  | 7 |
| Grader | Equipment |  | 6 |
| Air Compressor | Equipment |  | 7 |
| Utility Ute | Equipment |  | 5 |
| Electrician | Staff |  | 7 |
| Plumber | Staff |  | 5 |
| Astro Turf | Material | Square Metre | 12 |
| Paint | Paint | Ultre | 20 |
| Tax |  |  |  |
| Bonus |  |  |  |
| Part Time Fee |  |  |  |
| Logictis Cost |  |  |  |

## Schedule

| ID | WBS | Task | Type | Duration | Start | Finish | Predecessors | Complete | Remaining | Total slack | Free slack | Resources | Work | Actual work | Cost | Actual cost |
| --- | --- | --- | --- | --- | --- | --- | --- | --- | --- | --- | --- | --- | --- | --- | --- | --- |
| 1 | 1 | **Planning** |  | 88d | 2025-02-21 A | 2025-06-23 A |  | 100% |  |  |  |  | 648h | 648h | 5,500 | 5,500 |
| 2 | 1.1 | Creating architectural plans |  | 12w | 2025-02-21 A | 2025-05-14 A |  | 100% |  |  |  | Architect; Building Clerk [25%]; Draftsperson [200%] | 360h | 360h | 2,880 | 2,880 |
| 3 | 1.2 | Submit plans for approval |  | 1mo | 2025-05-15 A | 2025-06-11 A | 2 | 100% |  |  |  | Architect | 160h | 160h | 1,440 | 1,440 |
| 4 | 1.3 | Order materials |  | 8d | 2025-06-12 A | 2025-06-23 A | 3 | 100% |  |  |  | Building Clerk; Draftsperson | 128h | 128h | 960 | 960 |
| 5 | 1.4 | Planning Completed | milestone | 0d | 2025-06-23 A | 2025-06-23 A | 2, 3, 4 | 100% |  |  |  | Part Time Fee; Bonus |  |  | 220 | 220 |
| 6 | 2 | **Site Works** |  | 32d | 2025-06-24 A | 2025-08-06 A | 5 | 100% |  |  |  |  | 640h | 640h | 5,672 | 5,672 |
| 7 | 2.1 | Erect fencing |  | 3d | 2025-06-24 A | 2025-06-26 A |  | 100% |  |  |  | No Barrier Fencing | 24h | 24h | 72 | 72 |
| 8 | 2.2 | Erect site building |  | 4d | 2025-06-27 A | 2025-07-02 A | 7 | 100% |  |  |  | Carpenter [400%]; Labourer; Supervisor | 96h | 96h | 800 | 800 |
| 9 | 2.3 | Clear and level site |  | 3w | 2025-07-03 A | 2025-07-23 A | 8 | 100% |  |  |  | Driver [200%]; Grader [200%]; Supervisor | 360h | 360h | 3,120 | 3,120 |
| 10 | 2.4 | Prepare drainage infrastructure |  | 2w | 2025-07-24 A | 2025-08-06 A | 9 | 100% |  |  |  | Plumber [200%]; Supervisor [50%] | 80h | 80h | 680 | 680 |
| 11 | 2.5 | Prepare cabling infrastructure |  | 2w | 2025-07-24 A | 2025-08-06 A | 9 | 100% |  |  |  | Electrician [300%]; Supervisor [50%] | 80h | 80h | 760 | 760 |
| 12 | 2.6 | Site Works Completed | milestone | 0d | 2025-08-06 A | 2025-08-06 A | 7, 8, 9, 10, 11 | 100% |  |  |  | Logictis Cost |  |  | 240 | 240 |
| 13 | 3 | **Building Construction** |  | 334d | 2025-08-07 A | 2026-11-17 | 12 | 3% | 323.32d | 0d |  |  | 8472h | 1572h | 59,822 | 9,088 |
| 14 | 3.1 | Pour foundations |  | 4d | 2025-08-07 A | 2025-08-12 A |  | 100% |  |  |  | Rock Solid Concrete | 32h | 32h | 128 | 128 |
| 15 | 3.2 | Erect steelwork |  | 6mo | 2025-08-13 A | 2026-01-27 | 14 | 6% | 5.65mo | 0d |  | Boilermaker [600%]; Driver [200%]; High Jib Crane; Labourer [600%]; Rigger [600%]; Supervisor [50%]; Utility Ute; Welder [500%] | 3840h | 1540h | 25,920 | 8,960 |
| 16 | 3.3 | Erect wall |  | 8mo | 2026-01-28 | 2026-09-08 | 15 |  |  | 0d |  | Air Compressor; Carpenter [700%]; Driver; Electrician [75%]; Grader; Labourer [400%]; Plumber [25%]; Supervisor [50%] | 2560h |  | 18,560 |  |
| 17 | 3.4 | Install roofing superstructure |  | 4w | 2026-09-09 | 2026-10-06 | 16 |  |  | 0d |  | Air Compressor; Boilermaker [500%]; Driver [200%]; High Jib Crane; Labourer [500%]; Plumber [50%]; Rigger [500%]; Supervisor [50%]; Utility Ute; Welder [300%] | 800h |  | 5,280 |  |
| 18 | 3.5 | Install roofing retracting mechanism |  | 2w | 2026-10-07 | 2026-10-20 | 17 |  |  | 0d |  | Boilermaker [200%]; Driver; Electrician [200%]; High Jib Crane; Rigger [200%]; Supervisor [50%]; Welder | 280h |  | 2,000 |  |
| 19 | 3.6 | Erect seating tiers |  | 6w | 2026-10-07 | 2026-11-17 | 18SS |  |  | 0d |  | Air Compressor; Boilermaker [200%]; Carpenter [800%]; Driver; Labourer [500%]; Supervisor [50%]; Utility Ute; Welder [200%] | 960h |  | 6,720 |  |
| 20 | 3.7 | Building Construction Completed | milestone | 0d | 2026-11-17 | 2026-11-17 | 14, 15, 16, 17, 18, 19 |  |  | 0d |  | Logictis Cost; Bonus |  |  | 1,214 |  |
| 21 | 4 | **Fit Out** |  | 14d | 2026-11-18 | 2026-12-07 | 20 |  |  | 0d |  |  | 1040h |  | 6,170 |  |
| 22 | 4.1 | Fit all windows and doors |  | 1w | 2026-11-18 | 2026-11-24 |  |  |  | 9d |  | Carpenter [500%]; Labourer [200%] | 160h |  | 1,040 |  |
| 23 | 4.2 | Install electrical cabling |  | 0.5w | 2026-11-18 | 2026-11-20 |  |  |  | 3.5d | 0d | Electrician [300%]; Labourer [200%] | 80h |  | 520 |  |
| 24 | 4.3 | Install electrical fittings and fixtures |  | 0.67w | 2026-11-20 | 2026-11-25 | 23 |  |  | 8.17d |  | Electrician [300%] | 80h |  | 560 |  |
| 25 | 4.4 | Install all plumbing |  | 1w | 2026-11-18 | 2026-11-24 |  |  |  | 6.5d | 0d | Labourer [200%]; Plumber [200%] | 160h |  | 880 |  |
| 26 | 4.5 | Install plumbing fixtures and fittings |  | 0.5w | 2026-11-25 | 2026-11-27 | 25 |  |  | 6.5d |  | Plumber [200%] | 40h |  | 200 |  |
| 27 | 4.6 | Lay astro turf |  | 1w | 2026-11-18 | 2026-11-24 |  |  |  | 9d |  | Pure Grass Turf | 40h |  | 200 |  |
| 28 | 4.7 | Erect handrails and fencing |  | 1w | 2026-11-18 | 2026-11-24 |  |  |  | 0d |  | Boilermaker [200%]; Welder [400%] | 160h |  | 880 |  |
| 29 | 4.8 | Paint rooms, fixtures, fittings, etc. |  | 0.2mo | 2026-11-25 | 2026-11-30 | 28 |  |  | 0d |  | Painter [500%] | 160h |  | 960 |  |
| 30 | 4.9 | Install PA system |  | 2d | 2026-11-20 | 2026-11-24 | 23 |  |  | 4.5d |  | Listen Ear Audio | 16h |  | 80 |  |
| 31 | 4.10 | Install video imaging equipment |  | 3d | 2026-11-20 | 2026-11-25 | 23 |  |  | 3.5d |  | In Focus Video | 24h |  | 120 |  |
| 32 | 4.11 | Fit out control room |  | 1w | 2026-12-01 | 2026-12-07 | 29, 30, 31 |  |  | 0d |  | Electrician [200%]; In Focus Video; Listen Ear Audio | 120h |  | 680 |  |
| 33 | 4.12 | Fit Out Completed | milestone | 0d | 2026-12-07 | 2026-12-07 | 22, 23, 24, 25, 26, 27, 28, 29, 30, 31, 32 |  |  | 0d |  | Tax |  |  | 50 |  |

| ID | WBS | Task | Type | Duration | Start | Finish | Predecessors | Total slack | Resources | Work | Cost |
| --- | --- | --- | --- | --- | --- | --- | --- | --- | --- | --- | --- |
| 34 | 5 | **Commissioning** |  | 33.5d? | 2026-12-08 | 2027-01-22 | 33 | 0d |  | 400h | 3,340 |
| 35 | 5.1 | Test roof mechanism |  | 1w | 2026-12-08 | 2026-12-14 |  | 0d | Electrician [200%]; Supervisor; Rigger | 120h | 960 |
| 36 | 5.2 | Test PA system |  | 2d | 2026-12-08 | 2026-12-09 | 33 | 3d | Listen Ear Audio | 16h | 80 |
| 37 | 5.3 | Test video imaging equipment |  | 2d | 2026-12-08 | 2026-12-09 | 33 | 3d | In Focus Video | 16h | 80 |
| 38 | 5.4 | Test control room equipment |  | 5w | 2026-12-15 | 2027-01-18 | 35, 36, 37 | 0d | Architect; Electrician [200%]; In Focus Video [20%]; Listen Ear Audio [20%]; Supervisor | 200h | 1,520 |
| 39 | 5.5 | Obtain official occupancy |  | 1d | 2027-01-19 | 2027-01-19 | 38 | 0d | Architect; Building Clerk; Supervisor | 24h | 232 |
| 40 | 5.6 | Obtain safety certification |  | 2d | 2027-01-20 | 2027-01-21 | 39 | 0d | Supervisor | 16h | 192 |
| 41 | 5.7 | Official opening |  | 0.5d | 2027-01-22 | 2027-01-22 | 40 | 0d | Supervisor [200%] | 8h | 96 |
| 42 | 5.8 | Commissioning Completed | milestone | 0d | 2027-01-22 | 2027-01-22 | 35, 36, 37, 38, 39, 40, 41 | 0d | Bonus |  | 180 |
